# Schedule

Schedule from MS Project, 2012-12-05 to 2012-12-05.

## Calendars

- Standard: Mon-Fri 08:00-12:00, 13:00-17:00; Sat-Sun off.

## Resources

| Resource | Group |
| --- | --- |
| Khánh | Leader |
| Thịnh | Member/Tester |
| Vượng | Member/Developer |
| Anh | Member/Tester |

## Schedule

| ID | Task | Type | Duration | Start | Finish |
| --- | --- | --- | --- | --- | --- |
| 1 | Initiating | manual | 1d? | 2012-12-05 | 2012-12-05 |
| 2 | Planning | manual | 1d? | 2012-12-05 | 2012-12-05 |
| 3 | Executing | manual | 1d? | 2012-12-05 | 2012-12-05 |
| 4 | Monitoring and Controlling | manual | 1d? | 2012-12-05 | 2012-12-05 |
| 5 | Closing | manual | 1d? | 2012-12-05 | 2012-12-05 |
